# 作业四_项目计划_02R034_徐丽华

Schedule from MS Project, 2003-04-10 to 2003-06-04, costs in ￥, A marks actual dates.
xlh

## Calendars

- 标准: Mon-Fri 08:00-12:00, 13:00-17:00; Sat-Sun off.

## Resources

| Resource | Rate |
| --- | --- |
| 姜岳尊 | 70 |
| 韩万江 | 80 |
| 孙泉 | 70 |
| 郭天奇 | 45 |
| 岳好 | 40 |

## Schedule

| ID | WBS | Task | Duration | Start | Finish | Predecessors | Complete | Remaining | Baseline start | Baseline finish | Baseline duration | Total slack | Free slack | Constraint | Resources | Work | Actual work | Cost | Baseline cost | Actual cost |
| --- | --- | --- | --- | --- | --- | --- | --- | --- | --- | --- | --- | --- | --- | --- | --- | --- | --- | --- | --- | --- |
| 1 | 1 | **校务通系统开发** | 40d? | 2003-04-10 A | 2003-06-04 |  | 35% | 26d? | 2003-04-10 | 2003-06-06 | 42d? | 0d |  |  |  | 1072h | 352h | 72,760 | 75,160 | 23,800 |
| 2 | 1.1 | **软件规划** | 2d? | 2003-04-10 A | 2003-04-11 A |  | 100% |  | 2003-04-10 | 2003-04-11 | 2d? |  |  |  |  | 48h | 48h | 3,320 | 3,320 | 3,320 |
| 3 | 1.1.1 | 项目规划 | 1d | 2003-04-10 A | 2003-04-10 A |  | 100% |  | 2003-04-10 | 2003-04-10 | 1d |  |  |  | 韩万江; 姜岳尊 | 16h | 16h | 1,200 | 1,200 | 1,200 |
| 4 | 1.1.2 | 计划评审 | 1d? | 2003-04-11 A | 2003-04-11 A | 3 | 100% |  | 2003-04-11 | 2003-04-11 | 1d? |  |  |  | 韩万江; 姜岳尊; 孙泉; 郭天奇 | 32h | 32h | 2,120 | 2,120 | 2,120 |
| 5 | 1.2 | **需求开发** | 5d? | 2003-04-14 A | 2003-04-18 A |  | 100% |  | 2003-04-14 | 2003-04-18 | 5d? |  |  |  |  | 96h | 96h | 6,240 | 6,240 | 6,240 |
| 6 | 1.2.1 | 用户界面设计 | 1d? | 2003-04-14 A | 2003-04-14 A | 4 | 100% |  | 2003-04-14 | 2003-04-14 | 1d? |  |  |  | 姜岳尊; 孙泉 | 16h | 16h | 1,120 | 1,120 | 1,120 |
| 7 | 1.2.2 | 用户需求评审 | 1d? | 2003-04-15 A | 2003-04-15 A | 6 | 100% |  | 2003-04-15 | 2003-04-15 | 1d? |  |  |  | 姜岳尊; 韩万江; 孙泉; 郭天奇 | 32h | 32h | 2,120 | 2,120 | 2,120 |
| 8 | 1.2.3 | 修改需求、修改用户界面 | 1d? | 2003-04-16 A | 2003-04-16 A | 7 | 100% |  | 2003-04-16 | 2003-04-16 | 1d? |  |  |  | 姜岳尊; 孙泉 | 16h | 16h | 1,120 | 1,120 | 1,120 |
| 9 | 1.2.4 | 编写需求规格说明书 | 1d? | 2003-04-17 A | 2003-04-17 A | 8 | 100% |  | 2003-04-17 | 2003-04-17 | 1d? |  |  |  | 姜岳尊 | 8h | 8h | 560 | 560 | 560 |
| 10 | 1.2.5 | 需求验证 | 1d? | 2003-04-18 A | 2003-04-18 A | 9 | 100% |  | 2003-04-18 | 2003-04-18 | 1d? |  |  |  | 韩万江; 郭天奇; 岳好 | 24h | 24h | 1,320 | 1,320 | 1,320 |
| 11 | 1.3 | **设计** | 3d? | 2003-04-17 A | 2003-04-21 A |  | 100% |  | 2003-04-17 | 2003-04-22 | 4d? |  |  |  |  | 64h | 64h | 4,120 | 4,120 | 4,120 |
| 12 | school3.1 | 概要设计 | 2d | 2003-04-17 A | 2003-04-18 A | 8 | 100% |  | 2003-04-17 | 2003-04-18 | 2d |  |  |  | 孙泉 | 16h | 16h | 1,120 | 1,120 | 1,120 |
| 13 | school3.2 | 数据库ER图编制、建库 | 1d | 2003-04-18 A | 2003-04-18 A | 12 | 100% |  | 2003-04-21 | 2003-04-21 | 1d |  |  |  | 姜岳尊 | 8h | 8h | 560 | 560 | 560 |
| 14 | 1.3.3 | 设计评审 | 1d? | 2003-04-21 A | 2003-04-21 A | 13 | 100% |  | 2003-04-22 | 2003-04-22 | 1d? |  |  |  | 姜岳尊; 韩万江; 孙泉; 郭天奇; 岳好 | 40h | 40h | 2,440 | 2,440 | 2,440 |
| 15 | 1.4 | **实施** | 29d? | 2003-04-21 A | 2003-05-29 |  | 22% | 22.56d? | 2003-04-22 | 2003-06-02 | 30d? | 4d |  |  |  | 752h | 144h | 52,240 | 54,640 | 10,120 |
| 16 | 1.4.1 | **通用功能－增量1** | 5d? | 2003-04-21 A | 2003-04-25 A |  | 100% |  | 2003-04-22 | 2003-04-30 | 7d? |  |  |  | 韩万江 | 144h | 144h | 10,120 | 12,520 | 10,120 |
| 17 | 1.4.1.1 | 电子课表 | 2d | 2003-04-21 A | 2003-04-22 A | 13 | 100% |  | 2003-04-22 | 2003-04-24 | 3d |  |  |  | 姜岳尊 | 16h | 16h | 1,120 | 1,680 | 1,120 |
| 18 | 1.4.1.2 | 会议通知和公告 | 1d | 2003-04-21 A | 2003-04-21 A | 13 | 100% |  | 2003-04-22 | 2003-04-22 | 1d |  |  | finish no earlier than 2003-04-16 | 孙泉 | 8h | 8h | 560 | 560 | 560 |
| 19 | 1.4.1.3 | 个人日记 | 1d | 2003-04-22 A | 2003-04-22 A | 18 | 100% |  | 2003-04-23 | 2003-04-23 | 1d |  |  | finish no earlier than 2003-04-18 | 孙泉 [50%] | 4h | 4h | 280 | 560 | 280 |
| 20 | 1.4.1.4 | 通讯录 | 1d | 2003-04-22 A | 2003-04-22 A | 19 | 100% |  | 2003-04-24 | 2003-04-24 | 1d |  |  | finish no earlier than 2003-04-23 | 孙泉 [50%] | 4h | 4h | 280 | 560 | 280 |
| 21 | 1.4.1.5 | 教师答疑 | 2d | 2003-04-23 A | 2003-04-24 A | 17 | 100% |  | 2003-04-25 | 2003-04-28 | 2d |  |  | finish no earlier than 2003-04-28 | 姜岳尊 | 16h | 16h | 1,120 | 1,120 | 1,120 |
| 22 | 1.4.1.6 | 作业布置和批改 | 2d | 2003-04-23 A | 2003-04-24 A | 20 | 100% |  | 2003-04-28 | 2003-04-29 | 2d |  |  | start no earlier than 2003-04-28 | 孙泉 | 16h | 16h | 1,120 | 1,120 | 1,120 |
| 23 | 1.4.1.7 | 增量1-评审 | 1d? | 2003-04-25 A | 2003-04-25 A | 22, 21 | 100% |  | 2003-04-30 | 2003-04-30 | 1d? |  |  |  | 姜岳尊; 韩万江; 孙泉; 郭天奇; 岳好 | 40h | 40h | 2,440 | 2,440 | 2,440 |
| 24 | 1.4.2 | **招生管理－增量2** | 5d? | 2003-04-28 | 2003-05-02 |  |  |  | 2003-05-01 | 2003-05-07 | 5d? | 1d |  |  | 韩万江 | 128h |  | 9,000 | 9,000 |  |
| 25 | 1.4.2.1 | 报名 | 1d | 2003-04-28 | 2003-04-28 | 23 |  |  | 2003-05-01 | 2003-05-01 | 1d | 1d | 0d |  | 姜岳尊 | 8h |  | 560 | 560 |  |
| 26 | 1.4.2.2 | 招生 | 1d | 2003-04-29 | 2003-04-29 | 25 |  |  | 2003-05-02 | 2003-05-02 | 1d | 1d | 0d | start no earlier than 2003-04-14 | 孙泉 | 8h |  | 560 | 560 |  |
| 27 | 1.4.2.3 | 分班 | 2d | 2003-04-29 | 2003-04-30 | 25 |  |  | 2003-05-02 | 2003-05-05 | 2d | 25d |  | finish no earlier than 2003-04-17 | 姜岳尊 | 16h |  | 1,120 | 1,120 |  |
| 28 | 1.4.2.4 | 统计查询 | 2d | 2003-04-30 | 2003-05-01 | 26 |  |  | 2003-05-05 | 2003-05-06 | 2d | 1d | 0d | start no earlier than 2003-04-18 | 孙泉 | 16h |  | 1,120 | 1,120 |  |
| 29 | 1.4.2.5 | 增量2-评审 | 1d? | 2003-05-02 | 2003-05-02 | 28 |  |  | 2003-05-07 | 2003-05-07 | 1d? | 1d | 0d |  | 姜岳尊; 韩万江; 孙泉; 郭天奇; 岳好 | 40h |  | 2,440 | 2,440 |  |

| ID | WBS | Task | Duration | Start | Finish | Predecessors | Baseline start | Baseline finish | Baseline duration | Total slack | Free slack | Constraint | Resources | Work | Cost | Baseline cost |
| --- | --- | --- | --- | --- | --- | --- | --- | --- | --- | --- | --- | --- | --- | --- | --- | --- |
| 30 | 1.4.3 | **学生日常管理－增量3** | 3d? | 2003-05-05 | 2003-05-07 |  | 2003-05-08 | 2003-05-12 | 3d? | 1d |  |  | 韩万江 | 96h | 6,600 | 6,600 |
| 31 | 1.4.3.1 | 学生档案管理 | 1d | 2003-05-05 | 2003-05-05 | 29 | 2003-05-08 | 2003-05-08 | 1d | 21d | 0d | start no earlier than 2003-04-22 | 孙泉 | 8h | 560 | 560 |
| 32 | 1.4.3.2 | 学生考勤管理 | 1d | 2003-05-05 | 2003-05-05 | 29 | 2003-05-08 | 2003-05-08 | 1d | 1d | 0d | start no earlier than 2003-04-24 | 姜岳尊 | 8h | 560 | 560 |
| 33 | 1.4.3.3 | 学生奖惩 | 1d | 2003-05-06 | 2003-05-06 | 31 | 2003-05-09 | 2003-05-09 | 1d | 21d |  | start no earlier than 2003-04-28 | 孙泉 | 8h | 560 | 560 |
| 34 | 1.4.3.4 | 学生变动 | 1d | 2003-05-06 | 2003-05-06 | 32 | 2003-05-09 | 2003-05-09 | 1d | 1d | 0d |  | 姜岳尊 | 8h | 560 | 560 |
| 35 | 1.4.3.5 | 增量3-评审 | 1d? | 2003-05-07 | 2003-05-07 | 34 | 2003-05-12 | 2003-05-12 | 1d? | 1d | 0d |  | 姜岳尊; 韩万江; 孙泉; 郭天奇; 岳好 | 40h | 2,440 | 2,440 |
| 36 | 1.4.4 | **教务管理－增量4** | 9d? | 2003-05-08 | 2003-05-20 |  | 2003-05-13 | 2003-05-23 | 9d? | 1d |  |  | 韩万江 | 224h | 16,040 | 16,040 |
| 37 | 1.4.4.1 | 教师日常管理 | 1d | 2003-05-08 | 2003-05-08 | 35 | 2003-05-13 | 2003-05-13 | 1d | 14d | 0d | start no earlier than 2003-05-01 | 姜岳尊 | 8h | 560 | 560 |
| 38 | 1.4.4.2 | 年级、班级设置 | 3d | 2003-05-08 | 2003-05-12 | 35 | 2003-05-13 | 2003-05-15 | 3d | 1d | 0d |  | 孙泉 | 24h | 1,680 | 1,680 |
| 39 | 1.4.4.3 | 学科设置 | 1d | 2003-05-09 | 2003-05-09 | 37 | 2003-05-14 | 2003-05-14 | 1d | 14d | 0d |  | 姜岳尊 | 8h | 560 | 560 |
| 40 | 1.4.4.4 | 年班级课程设计 | 2d | 2003-05-12 | 2003-05-13 | 39 | 2003-05-15 | 2003-05-16 | 2d | 14d | 0d |  | 孙泉 | 16h | 1,120 | 1,120 |
| 41 | 1.4.4.5 | 排课表 | 2d | 2003-05-13 | 2003-05-14 | 38 | 2003-05-16 | 2003-05-19 | 2d | 1d | 0d |  | 孙泉 | 16h | 1,120 | 1,120 |
| 42 | 1.4.4.6 | 考试管理 | 2d | 2003-05-14 | 2003-05-15 | 40 | 2003-05-19 | 2003-05-20 | 2d | 14d |  |  | 姜岳尊 | 16h | 1,120 | 1,120 |
| 43 | 1.4.4.7 | 评价 | 3d | 2003-05-15 | 2003-05-19 | 41 | 2003-05-20 | 2003-05-22 | 3d | 1d | 0d |  | 孙泉 | 24h | 1,680 | 1,680 |
| 44 | 1.4.4.8 | 增量4-评审 | 1d? | 2003-05-20 | 2003-05-20 | 43 | 2003-05-23 | 2003-05-23 | 1d? | 1d | 0d |  | 姜岳尊; 韩万江; 孙泉; 郭天奇; 岳好 | 40h | 2,440 | 2,440 |
| 45 | 1.4.5 | **教师辅助功能－增量5** | 5d? | 2003-05-21 | 2003-05-27 |  | 2003-05-26 | 2003-05-29 | 4d? | 1d |  |  |  | 88h | 5,800 | 5,800 |
| 46 | 1.4.5.1 | 教师备课系统（外包） | 1d | 2003-05-21 | 2003-05-21 | 44 | 2003-05-26 | 2003-05-26 | 1d | 10d |  | start no earlier than 2003-05-05 | 姜岳尊 | 8h | 560 | 560 |
| 47 | 1.4.5.2 | 资源库系统 | 1d | 2003-05-21 | 2003-05-21 | 44 | 2003-05-26 | 2003-05-26 | 1d | 1d |  | start no earlier than 2003-05-09 | 孙泉 | 8h | 560 | 560 |
| 48 | 1.4.5.3 | 网上考试 | 2d | 2003-05-23 | 2003-05-26 | 47 | 2003-05-27 | 2003-05-28 | 2d | 0d |  | start no earlier than 2003-05-23 | 姜岳尊; 孙泉 | 32h | 2,240 | 2,240 |
| 49 | 1.4.5.4 | 增量5-评审 | 1d? | 2003-05-27 | 2003-05-27 | 48 | 2003-05-29 | 2003-05-29 | 1d? | 0d |  |  | 姜岳尊; 韩万江; 孙泉; 郭天奇; 岳好 | 40h | 2,440 | 2,440 |
| 50 | 1.4.6 | **聊天室/论坛－增量6** | 2d? | 2003-05-28 | 2003-05-29 | 22 | 2003-05-30 | 2003-06-02 | 2d? | 0d |  |  | 姜岳尊 | 72h | 4,680 | 4,680 |
| 51 | 1.4.6.1 | 论坛 | 1d | 2003-05-28 | 2003-05-28 | 49 | 2003-05-30 | 2003-05-30 | 1d | 5d |  | start no earlier than 2003-05-02 | 姜岳尊 | 8h | 560 | 560 |
| 52 | 1.4.6.2 | 聊天室 | 1d? | 2003-05-28 | 2003-05-28 | 49 | 2003-05-30 | 2003-05-30 | 1d? | 0d |  |  | 孙泉 | 8h | 560 | 560 |
| 53 | 1.4.6.3 | 实施过程评审 | 1d? | 2003-05-29 | 2003-05-29 | 52 | 2003-06-02 | 2003-06-02 | 1d? | 0d |  |  | 姜岳尊; 韩万江; 孙泉; 郭天奇; 岳好 | 40h | 2,440 | 2,440 |

| ID | WBS | Task | Duration | Start | Finish | Predecessors | Baseline start | Baseline finish | Baseline duration | Total slack | Resources | Work | Cost | Baseline cost |
| --- | --- | --- | --- | --- | --- | --- | --- | --- | --- | --- | --- | --- | --- | --- |
| 54 | 1.5 | **系统集成** | 2d? | 2003-05-30 | 2003-06-02 |  | 2003-06-03 | 2003-06-04 | 2d? | 0d |  | 48h | 2,920 | 2,920 |
| 55 | 1.5.1 | 系统集成测试 | 1d? | 2003-05-30 | 2003-05-30 | 53 | 2003-06-03 | 2003-06-03 | 1d? | 0d | 姜岳尊; 孙泉 | 16h | 1,120 | 1,120 |
| 56 | 1.5.2 | 环境测试 | 1d? | 2003-06-02 | 2003-06-02 | 55 | 2003-06-04 | 2003-06-04 | 1d? | 0d | 姜岳尊; 孙泉; 郭天奇; 岳好 | 32h | 1,800 | 1,800 |
| 57 | 1.6 | **提交** | 2d? | 2003-06-03 | 2003-06-04 |  | 2003-06-05 | 2003-06-06 | 2d? | 0d |  | 64h | 3,920 | 3,920 |
| 58 | 1.6.1 | 完成文档 | 1d? | 2003-06-03 | 2003-06-03 | 56 | 2003-06-05 | 2003-06-05 | 1d? | 0d | 姜岳尊; 孙泉; 郭天奇 | 24h | 1,480 | 1,480 |
| 59 | 1.6.2 | 验收、提交 | 1d? | 2003-06-04 | 2003-06-04 | 58 | 2003-06-06 | 2003-06-06 | 1d? | 0d | 姜岳尊; 韩万江; 孙泉; 郭天奇; 岳好 | 40h | 2,440 | 2,440 |
